# Gantt Proyecto de Plaificacion v1.0

Schedule from MS Project, 2016-07-07 to 2016-08-23.

## Calendars

- MD - 2015/2016: Mon-Fri 07:45-12:30, 13:15-17:00; Sat-Sun off. Exceptions (off unless hours are given): 2015-05-01 to 2024-05-01 (Día del trabajo, recurring), 2015-05-21 to 2024-05-21 (Glorias Navales, recurring), 2015-06-27 to 2024-06-27 (San Pedro y San Pablo, recurring), 2015-07-16 to 2024-07-16 (Solemnidad de la virgen del Carmen, recurring), 2015-08-15 to 2024-08-15 (Asuncion de la Virgen, recurring), 2015-09-18 to 2024-09-18 (Fiestas Patrias, recurring), 2015-09-19 to 2024-09-19 (Glorias Del Ejercito, recurring), 2015-10-12 to 2024-10-12 (Día de Descubrimiento de 2 Mundos, recurring), 2015-10-31 to 2024-10-31 (Día de las Iglesias Evangelicas y Protestantes, recurring), 2015-11-01 to 2024-11-01 (Día de Todos Los Santos, recurring), 2015-12-08 to 2024-12-08 (Día de la inmaculada Concepción, recurring), 2015-12-25 to 2024-12-25 (Navidad, recurring), 2016-01-01 to 2025-01-01 (Año Nuevo, recurring).

## Resources

| Resource |
| --- |
| Eduado Pino |
| Gabriel Medina |
| Hernan Cares |
| Claudio Alvarez |
| Ilic Alarcon |
| Carlos Belmar |
| Oscar Torres |
| Victor Acevedo |
| Francisco Vargas |
| Francisco Gomez |
| Cesar Toro |
| Sergio Soto |
| Luis Godoy |
| Juan Carlos Toro |
| Aldo Recabal |
| Danilo San martin |
| Diego Quezada |
| Daniel Gutierrez |
| Alonso Silva |
| Marcelo vargas |
| Hector Adriazola |
| Jendri Calderon |
| Daniel Osorio |

## Schedule

| ID | WBS | Task | Duration | Start | Finish | Predecessors | Total slack | Free slack | Constraint | Work | Text3 |
| --- | --- | --- | --- | --- | --- | --- | --- | --- | --- | --- | --- |
| 1 | 1 | Reunion Introduccion Antofagasta | 1h | 2016-07-11 | 2016-07-11 |  | 0d |  | start no earlier than 2016-07-11 |  |  |
| 2 | 2 | Reunion Avances N°2 | 30min | 2016-07-15 | 2016-07-15 |  | 27.88d |  | start no earlier than 2016-07-15 |  |  |
| 3 | 3 | Definiciones Alcances y Compromisos | 1d? | 2016-07-07 | 2016-07-07 |  | 33.66d |  |  |  |  |
| 4 | 4 | **Definicion Capacidades de Recursos** | 8.16d? | 2016-07-11 | 2016-07-20 |  | 16.37d |  |  |  |  |
| 5 | 4.1 | Recepcion Capacidades Trabajadores CCP | 4.25d | 2016-07-11 | 2016-07-14 |  | 16.65d | 0.28d | start no earlier than 2016-07-11 |  | Manuel Morales |
| 6 | 4.2 | Recepcion Capacidades Trabajadores Stgo | 4.19d | 2016-07-11 | 2016-07-14 |  | 16.65d | 0.28d | finish no earlier than 2016-07-14 |  |  |
| 7 | 4.3 | Recepcion Capacidades Trabajadores Afta | 4d | 2016-07-11 | 2016-07-15 | 1 | 16.37d | 0d | start no earlier than 2016-07-11 |  | Pablo Carrasco |
| 8 | 4.4 | Analisis de Capacidades Trabajadores | 2.63d? | 2016-07-15 | 2016-07-19 | 7, 6, 5 | 16.37d | 0d | start no earlier than 2016-07-13 |  |  |
| 9 | 4.5 | Pre definicion de Centros de Trabajo | 1d? | 2016-07-19 | 2016-07-20 | 8 | 16.37d |  |  |  |  |
| 10 | 5 | **Definicion de Maestros de Reparacion** | 26.66d? | 2016-07-07 | 2016-08-11 |  | 0d |  |  | 816h |  |
| 11 | 5.1 | **Definicion y Ordenamiento de Modelos de Componentes** | 5.66d? | 2016-07-07 | 2016-07-14 |  | 0d |  |  |  |  |
| 12 | 5.1.1 | Estadistica Rotacion de Componentes STGO | 2d? | 2016-07-07 | 2016-07-08 |  | 2.66d |  | start no earlier than 2016-07-07 |  |  |
| 13 | 5.1.2 | Estadistica Rotacion de Componentes CCP | 2d | 2016-07-07 | 2016-07-11 |  | 1.66d |  | start no earlier than 2016-07-07 |  | manuel Morales |
| 14 | 5.1.3 | Estadistica Rotacion de Componentes ANF | 2d | 2016-07-11 | 2016-07-13 | 1 | 0d |  |  |  | Pablo Carrasco |
| 15 | 5.1.4 | Definicion de componentes Muestra Por Area | 1d? | 2016-07-13 | 2016-07-14 | 14, 13, 12 | 0d |  |  |  |  |
| 16 | 5.2 | **Diseño Listado de Tareas** | 6d? | 2016-07-14 | 2016-07-21 |  | 14d |  |  |  |  |
| 17 | 5.2.1 | Listado Inicial de Tareas - Reductores Paralelos | 1d? | 2016-07-14 | 2016-07-15 | 15 | 14d | 0d |  |  | Aldo Recabal |
| 18 | 5.2.2 | Listado Inicial de Tareas - Reductores Planetarios | 1d? | 2016-07-15 | 2016-07-18 | 17 | 14d | 0d |  |  | Aldo Recabal |
| 19 | 5.2.3 | Listado Inicial de Tareas - Transmisiones | 1d? | 2016-07-18 | 2016-07-19 | 18 | 14d | 0d |  |  | Aldo Recabal |
| 20 | 5.2.4 | Listado Inicial de Tareas - Cilindros | 1d? | 2016-07-14 | 2016-07-15 | 15 | 16d | 2d |  |  | Diego Quezada |
| 21 | 5.2.5 | Listado Inicial de Tareas - Bombas | 1d? | 2016-07-14 | 2016-07-15 | 15 | 16d | 2d |  |  | Daniel Gutierrez |
| 22 | 5.2.6 | Listado Inicial de Tareas - Compresores | 1d? | 2016-07-14 | 2016-07-15 | 15 | 16d | 2d |  |  |  |
| 23 | 5.2.7 | Listado Inicial de Tareas - Motores | 1d? | 2016-07-14 | 2016-07-15 | 15 | 16d | 2d |  |  |  |
| 24 | 5.2.8 | Listado Inicial de Tareas - Torno | 1d? | 2016-07-14 | 2016-07-15 | 15 | 16d | 2d |  |  |  |
| 25 | 5.2.9 | Listado Inicial de Tareas - Soldadura | 1d? | 2016-07-14 | 2016-07-15 | 15 | 16d | 2d |  |  |  |
| 26 | 5.2.10 | Analisis y consolidacion tipos de Tareas | 1d? | 2016-07-19 | 2016-07-20 | 25, 24, 23, 21, 20, 19, 22 | 14d | 0d |  |  |  |

| ID | WBS | Task | Duration | Start | Finish | Predecessors | Total slack | Free slack | Resources | Work |
| --- | --- | --- | --- | --- | --- | --- | --- | --- | --- | --- |
| 27 | 5.2.11 | **Definicion Tipos de Tareas** | 2d? | 2016-07-20 | 2016-07-21 |  | 14d |  |  |  |
| 28 | 5.2.11.1 | analisis tipo tareas - AFTA | 1d? | 2016-07-20 | 2016-07-21 | 26 | 14d | 0d |  |  |
| 29 | 5.2.11.2 | analisis tipo tareas - CCP | 1d? | 2016-07-20 | 2016-07-21 | 26 | 14d | 0d |  |  |
| 30 | 5.2.11.3 | analisis tipo tareas - STGO | 1d? | 2016-07-20 | 2016-07-21 | 26 | 14d | 0d |  |  |
| 31 | 5.2.11.4 | Consolidacion listado Tipos de Tareas | 1d? | 2016-07-21 | 2016-07-21 | 30, 29, 28 | 14d |  |  |  |
| 32 | 5.3 | **Diseño Listado de Repuestos** | 20d | 2016-07-14 | 2016-08-10 |  | 0d |  |  | 816h |
| 33 | 5.3.1 | Listado Inicial de Repuestos - Reductores Paralelos | 17d | 2016-07-14 | 2016-08-05 | 15 | 0d |  | Alonso Silva | 136h |
| 34 | 5.3.2 | Listado Inicial de Repuestos - Reductores Planetarios | 17d | 2016-07-14 | 2016-08-05 | 15 | 0d |  | Marcelo vargas | 136h |
| 35 | 5.3.3 | Listado Inicial de Repuestos - Transmisiones | 17d | 2016-07-14 | 2016-08-05 | 15 | 0d |  | Hector Adriazola | 136h |
| 36 | 5.3.4 | Listado Inicial de Repuestos - Cilindros | 17d | 2016-07-14 | 2016-08-05 | 15 | 0d |  | Jendri Calderon | 136h |
| 37 | 5.3.5 | Listado Inicial de Repuestos - Bombas | 17d | 2016-07-14 | 2016-08-05 | 15 | 0d |  |  |  |
| 38 | 5.3.6 | Listado Inicial de Repuestos - Compresores | 17d | 2016-07-14 | 2016-08-05 | 15 | 0d |  | Daniel Osorio | 136h |
| 39 | 5.3.7 | Listado Inicial de Repuestos - Motores | 17d | 2016-07-14 | 2016-08-05 | 15 | 0d |  | Juan Carlos Toro | 136h |
| 40 | 5.3.8 | Listado Inicial de Repuestos - Torno | 17d | 2016-07-14 | 2016-08-05 | 15 | 0d |  |  |  |
| 41 | 5.3.9 | Listado Inicial de Repuestos - Soldadura | 17d | 2016-07-14 | 2016-08-05 | 15 | 0d |  |  |  |
| 42 | 5.3.10 | Analisis y consolidacion tipos de Repuestos y Manuales de Parte | 3d | 2016-08-05 | 2016-08-10 | 33, 34, 35, 36, 37, 38, 39, 40, 41 | 0d |  |  |  |
| 43 | 5.4 | Diseño Tipos de Reparacion | 1d? | 2016-08-10 | 2016-08-11 | 42, 31 | 0d |  |  |  |
| 44 | 6 | **Centros De Trabajo** | 1d? | 2016-08-11 | 2016-08-12 |  | 0d |  |  |  |
| 45 | 6.1 | Revision estructura Centros de Trabajo | 1d? | 2016-08-11 | 2016-08-12 | 9, 43 | 0d |  |  |  |
| 46 | 7 | Revision y Re diseño Hojas de Ruta | 1d? | 2016-08-12 | 2016-08-12 | 45 | 0d |  |  |  |
| 47 | 8 | Diseño Detalle de Evaluacion | 1d? | 2016-08-12 | 2016-08-16 | 46 | 0d |  |  |  |
| 48 | 9 | Revision y Rediseño Detalle de Reparacion | 1d? | 2016-08-16 | 2016-08-17 | 47 | 0d |  |  |  |
| 49 | 10 | **Recepcion de Componentes** | 34.66d? | 2016-07-07 | 2016-08-23 |  | 0d |  |  |  |
| 50 | 10.1 | Revision Tipos de Componente | 1d? | 2016-08-17 | 2016-08-18 | 48 | 0d |  |  |  |
| 51 | 10.2 | Diseño de Pre Recepcion | 1d? | 2016-08-18 | 2016-08-19 | 50 | 0d |  |  |  |
| 52 | 10.3 | Analisis de Agendamientos | 1d? | 2016-08-19 | 2016-08-22 | 51 | 0d |  |  |  |
| 53 | 10.4 | Revisiones Con Sucursales | 1d? | 2016-08-22 | 2016-08-23 | 52 | 0d |  |  |  |

| ID | WBS | Task | Duration | Start | Finish | Predecessors | Total slack | Free slack | Constraint |
| --- | --- | --- | --- | --- | --- | --- | --- | --- | --- |
| 54 | 10.5 | **Revision Y Modificacion Recepcion de Componentes** | 1d? | 2016-07-07 | 2016-07-07 |  | 33.66d |  |  |
| 55 | 10.5.1 | Revision Criterios de Recepcion | 1d? | 2016-07-07 | 2016-07-07 |  | 33.66d |  |  |
| 56 | 10.5.2 | Diseño de Checklist de Recepcion | 1d? | 2016-07-07 | 2016-07-07 |  | 33.66d |  |  |
| 57 | 10.5.3 | Analisis de pantalla de Recepcion | 1d? | 2016-07-07 | 2016-07-07 |  | 33.66d |  |  |
| 58 | 11 | **Revision Proceso de Compras** | 2d? | 2016-07-07 | 2016-07-08 |  | 32.66d |  |  |
| 59 | 11.1 | Levantamiento de Requerimientos Adquisiciones | 1d? | 2016-07-07 | 2016-07-07 |  | 32.66d | 0d |  |
| 60 | 11.2 | Levantamiento Requerimientos Stgo | 1d? | 2016-07-07 | 2016-07-07 |  | 32.66d | 0d |  |
| 61 | 11.3 | Levantamiento Requerimientos Afta | 1d? | 2016-07-07 | 2016-07-07 |  | 32.66d | 0d |  |
| 62 | 11.4 | Levantamiento Requerimientos CCP | 1d? | 2016-07-07 | 2016-07-07 |  | 32.66d | 0d |  |
| 63 | 11.5 | Definiciones linea critica | 1d? | 2016-07-07 | 2016-07-08 | 59, 60, 61, 62 | 32.66d |  |  |
| 64 | 12 | Analisis sistemas de planificacion otras Empresas | 1d? | 2016-07-29 | 2016-07-29 |  | 16.66d |  | start no earlier than 2016-07-29 |
| 66 | 13 | **requerimiento de especificaciones Tecnicas** | 17.38d | 2016-07-29 | 2016-08-23 |  | 0.28d |  |  |
| 67 | 13.1 | Capacidades Sistema Comercial | 2w | 2016-08-04 | 2016-08-18 |  | 0.28d | 0d | start no earlier than 2016-08-04 |
| 68 | 13.2 | Requerimientos mejoras | 2w | 2016-08-04 | 2016-08-18 |  | 0.28d | 0d | start no earlier than 2016-08-04 |
| 69 | 13.3 | **Analisis software externos** | 13d | 2016-07-29 | 2016-08-17 |  | 1.53d |  |  |
| 70 | 13.3.1 | Revision proveedores | 4d | 2016-07-29 | 2016-08-03 |  | 1.53d | 0d | start no earlier than 2016-07-29 |
| 71 | 13.3.2 | envío de requerimientos | 1d | 2016-08-03 | 2016-08-04 | 70 | 1.53d | 0d |  |
| 72 | 13.3.3 | recepcion de propuestas | 5d | 2016-08-04 | 2016-08-11 | 71 | 1.53d | 0d |  |
| 73 | 13.3.4 | analisis de propuestas | 3d | 2016-08-11 | 2016-08-17 | 72 | 1.53d | 1.25d |  |
| 74 | 13.4 | Analisis de alternativas | 3d | 2016-08-18 | 2016-08-23 | 67, 68, 73 | 0.28d | 0d |  |
| 75 | 13.5 | presentacion de alternativas | 1h | 2016-08-23 | 2016-08-23 | 74 | 0.28d |  |  |
