# Gantt Proyecto de Planificacion v1.0

Schedule from MS Project, 2016-07-07 to 2018-09-12, A marks actual dates.

## Calendars

- MD - 2015/2016: Mon-Fri 07:45-12:30, 13:15-17:00; Sat-Sun off. Exceptions (off unless hours are given): 2015-05-01 to 2024-05-01 (Día del trabajo, recurring), 2015-05-21 to 2024-05-21 (Glorias Navales, recurring), 2015-06-27 to 2024-06-27 (San Pedro y San Pablo, recurring), 2015-07-16 to 2024-07-16 (Solemnidad de la virgen del Carmen, recurring), 2015-08-15 to 2024-08-15 (Asuncion de la Virgen, recurring), 2015-09-18 to 2024-09-18 (Fiestas Patrias, recurring), 2015-09-19 to 2024-09-19 (Glorias Del Ejercito, recurring), 2015-10-12 to 2024-10-12 (Día de Descubrimiento de 2 Mundos, recurring), 2015-10-31 to 2024-10-31 (Día de las Iglesias Evangelicas y Protestantes, recurring), 2015-11-01 to 2024-11-01 (Día de Todos Los Santos, recurring), 2015-12-08 to 2024-12-08 (Día de la inmaculada Concepción, recurring), 2015-12-25 to 2024-12-25 (Navidad, recurring), 2016-01-01 to 2025-01-01 (Año Nuevo, recurring).

## Resources

| Resource |
| --- |
| Eduado Pino |
| Gabriel Medina |
| Hernan Cares |
| Claudio Alvarez |
| Ilic Alarcon |
| Carlos Belmar |
| Oscar Torres |
| Victor Acevedo |
| Francisco Vargas |
| Francisco Gomez |
| Cesar Toro |
| Sergio Soto |
| Luis Godoy |
| Juan Carlos Toro |
| Aldo Recabal |
| Danilo San martin |
| Diego Quezada |
| Daniel Gutierrez |
| Alonso Silva |
| Marcelo vargas |
| Hector Adriazola |
| Jendri Calderon |
| Daniel Osorio |

## Schedule

| ID | WBS | Task | Duration | Start | Finish | Predecessors | Complete | Remaining | Total slack | Free slack | Constraint | Work | Text3 |
| --- | --- | --- | --- | --- | --- | --- | --- | --- | --- | --- | --- | --- | --- |
| 1 | 1 | Reunion Introduccion Antofagasta | 1h | 2016-07-11 A | 2016-07-11 A |  | 100% |  |  |  | start no earlier than 2016-07-11 |  |  |
| 2 | 2 | Reunion Avances N°2 | 30min | 2016-07-15 A | 2016-07-15 A |  | 100% |  |  |  | start no earlier than 2016-07-15 |  |  |
| 3 | 3 | Definiciones Alcances y Compromisos | 1d? | 2016-07-07 A | 2016-07-07 A |  | 100% |  |  |  |  |  |  |
| 4 | 4 | **Definicion Capacidades de Recursos** | 11.53d | 2016-07-11 A | 2016-07-25 |  | 71% | 3.3d | 47.34d |  |  |  |  |
| 5 | 4.1 | Recepcion Capacidades Trabajadores CCP | 4.25d | 2016-07-11 A | 2016-07-14 A |  | 100% |  |  |  | start no earlier than 2016-07-11 |  | Manuel Morales |
| 6 | 4.2 | Recepcion Capacidades Trabajadores Stgo | 4.19d | 2016-07-11 A | 2016-07-14 A |  | 100% |  |  |  | finish no earlier than 2016-07-14 |  |  |
| 7 | 4.3 | Recepcion Capacidades Trabajadores Afta | 4d | 2016-07-11 A | 2016-07-15 | 1 | 90% | 0.4d | 1.84d | 0d | start no earlier than 2016-07-11 |  | Pablo Carrasco |
| 8 | 4.4 | Analisis de Capacidades Trabajadores | 4d | 2016-07-15 A | 2016-07-21 | 7, 6, 5 | 46% | 2.16d | 10.74d | 0d | start no earlier than 2016-07-13 |  |  |
| 9 | 4.5 | Pre definicion de Centros de Trabajo | 3d | 2016-07-21 | 2016-07-25 | 8 |  |  | 10.74d | 10.34d |  |  |  |
| 10 | 5 | **Definicion de Maestros de Reparacion** | 61d? | 2016-07-07 A | 2016-09-28 |  | 2% | 59.65d? | 521.06d |  |  | 816h |  |
| 11 | 5.1 | **Definicion y Ordenamiento de Modelos de Componente** | 40d | 2016-07-07 A | 2016-08-30 |  |  | 40d | 0d |  |  |  |  |
| 12 | 5.1.1 | Estadistica Rotacion de Componentes | 1mo | 2016-07-07 A | 2016-08-02 |  |  | 1mo | -36.6d | 0d | start no earlier than 2016-07-07 |  |  |
| 13 | 5.1.2 | Definicion de componentes Muestra Por Area | 1mo | 2016-08-02 | 2016-08-30 | 12 |  |  | -36.6d | 0d |  |  |  |
| 14 | 5.2 | **Diseño Listado de Tareas** | 47d? | 2016-07-11 A | 2016-09-13 |  | 20% | 37.4d? | 532.06d |  |  |  |  |
| 15 | 5.2.1 | Listado Inicial de Tareas - Reductores Paralelos | 1d? | 2016-07-11 A | 2016-08-31 | 13 | 40% | 0.6d? | 793.46d |  |  |  | Aldo Recabal |
| 16 | 5.2.2 | Listado Inicial de Tareas - Reductores Planetarios | 1d? | 2016-07-12 A | 2016-07-13 A | 15 | 100% |  |  |  |  |  | Aldo Recabal |
| 17 | 5.2.3 | Listado Inicial de Tareas - Transmisiones | 1d? | 2016-07-13 A | 2016-07-14 A | 16 | 100% |  |  |  |  |  | Aldo Recabal |
| 18 | 5.2.4 | Listado Inicial de Tareas - Cilindros | 1d? | 2016-07-11 A | 2016-08-31 | 13 | 60% | 0.4d? | 0.6d |  |  |  | Diego Quezada |
| 19 | 5.2.5 | Listado Inicial de Tareas - Bombas | 1d? | 2016-07-11 A | 2016-08-31 | 13 | 40% | 0.6d? | 0.4d |  |  |  | Daniel Gutierrez |
| 20 | 5.2.6 | Listado Inicial de Tareas - Compresores | 1d? | 2016-07-11 A | 2016-07-12 A | 13 | 100% |  |  |  |  |  |  |
| 21 | 5.2.7 | Listado Inicial de Tareas - Motores | 1d? | 2016-08-30 | 2016-08-31 | 13 |  |  | -26.6d | 0d |  |  |  |
| 22 | 5.2.8 | Listado Inicial de Tareas - Torno | 1d? | 2016-08-30 | 2016-08-31 | 13 |  |  | -26.6d | 0d |  |  |  |
| 23 | 5.2.9 | Listado Inicial de Tareas - Soldadura | 1d? | 2016-08-30 | 2016-08-31 | 13 |  |  | -26.6d | 0d |  |  |  |
| 24 | 5.2.10 | Analisis y consolidacion tipos de Tareas | 1w | 2016-08-31 | 2016-09-07 | 23, 22, 21, 19, 18, 17, 20 |  |  | -26.6d | 0d |  |  |  |

| ID | WBS | Task | Duration | Start | Finish | Predecessors | Complete | Remaining | Total slack | Free slack | Constraint | Resources | Work |
| --- | --- | --- | --- | --- | --- | --- | --- | --- | --- | --- | --- | --- | --- |
| 25 | 5.2.11 | **Definicion Tipos de Tareas** | 43d? | 2016-07-15 A | 2016-09-13 |  | 5% | 40.85d? | 10d |  |  |  |  |
| 26 | 5.2.11.1 | analisis tipo tareas - AFTA | 3d | 2016-07-15 A | 2016-09-09 | 24 | 17% | 2.5d | 10.5d | 0.5d |  |  |  |
| 27 | 5.2.11.2 | analisis tipo tareas - CCP | 3d | 2016-09-07 | 2016-09-12 | 24 |  |  | 10d | 0d |  |  |  |
| 28 | 5.2.11.3 | analisis tipo tareas - STGO | 3d | 2016-09-07 | 2016-09-12 | 24 |  |  | 10d | 0d |  |  |  |
| 29 | 5.2.11.4 | Consolidacion listado Tipos de Tareas | 1d? | 2016-09-12 | 2016-09-13 | 28, 27, 26 |  |  | 10d |  |  |  |  |
| 30 | 5.3 | **Diseño Listado de Repuestos** | 20d | 2016-08-30 | 2016-09-27 |  |  |  | 0d |  |  |  | 816h |
| 31 | 5.3.1 | Listado Inicial de Repuestos - Reductores Paralelos | 17d | 2016-08-30 | 2016-09-22 | 13 |  |  | -36.6d | 0d |  | Alonso Silva | 136h |
| 32 | 5.3.2 | Listado Inicial de Repuestos - Reductores Planetarios | 17d | 2016-08-30 | 2016-09-22 | 13 |  |  | -36.6d | 0d |  | Marcelo vargas | 136h |
| 33 | 5.3.3 | Listado Inicial de Repuestos - Transmisiones | 17d | 2016-08-30 | 2016-09-22 | 13 |  |  | -36.6d | 0d |  | Hector Adriazola | 136h |
| 34 | 5.3.4 | Listado Inicial de Repuestos - Cilindros | 17d | 2016-08-30 | 2016-09-22 | 13 |  |  | -36.6d | 0d |  | Jendri Calderon | 136h |
| 35 | 5.3.5 | Listado Inicial de Repuestos - Bombas | 17d | 2016-08-30 | 2016-09-22 | 13 |  |  | -36.6d | 0d |  |  |  |
| 36 | 5.3.6 | Listado Inicial de Repuestos - Compresores | 17d | 2016-08-30 | 2016-09-22 | 13 |  |  | -36.6d | 0d |  | Daniel Osorio | 136h |
| 37 | 5.3.7 | Listado Inicial de Repuestos - Motores | 17d | 2016-08-30 | 2016-09-22 | 13 |  |  | -36.6d | 0d |  | Juan Carlos Toro | 136h |
| 38 | 5.3.8 | Listado Inicial de Repuestos - Torno | 17d | 2016-08-30 | 2016-09-22 | 13 |  |  | -36.6d | 0d |  |  |  |
| 39 | 5.3.9 | Listado Inicial de Repuestos - Soldadura | 17d | 2016-08-30 | 2016-09-22 | 13 |  |  | -36.6d | 0d |  |  |  |
| 40 | 5.3.10 | Analisis y consolidacion tipos de Repuestos y Manuales de Parte | 3d | 2016-09-22 | 2016-09-27 | 31, 32, 33, 34, 35, 36, 37, 38, 39 |  |  | -36.6d | 0d |  |  |  |
| 41 | 5.4 | Diseño Tipos de Reparacion | 1d? | 2016-09-27 | 2016-09-28 | 40, 29 |  |  | -36.6d | 0d |  |  |  |
| 42 | 6 | **Centros De Trabajo** | 37.6d? | 2016-08-08 A | 2016-09-28 |  | 40% | 22.56d? | 519.46d |  |  |  |  |
| 43 | 6.1 | Revision estructura Centros de Trabajo | 1d? | 2016-08-08 A | 2016-09-28 | 9, 41 | 40% | 0.6d? | 771.46d | 0d |  |  |  |
| 44 | 7 | Analisis sistemas de planificacion otras Empresas | 1d? | 2016-09-28 | 2016-09-29 | 43 |  |  | 771.46d |  | start no earlier than 2016-07-29 |  |  |
| 45 | 8 | **Implementación Hojas de Ruta** | 10d | 2016-07-07 | 2016-07-20 |  |  |  | 572.06d |  |  |  |  |
| 46 | 8.1 | **implementacion Areas** | 10d | 2016-07-07 | 2016-07-20 |  |  |  | 572.06d |  |  |  |  |
| 47 | 8.1.1 | Transmisiones | 2w | 2016-07-07 | 2016-07-20 |  |  |  | 572.06d |  |  |  |  |
| 48 | 8.1.2 | Reductores | 2w | 2016-07-07 | 2016-07-20 |  |  |  | 572.06d |  |  |  |  |
| 49 | 8.1.3 | Compresores | 2w | 2016-07-07 | 2016-07-20 |  |  |  | 572.06d |  |  |  |  |
| 50 | 8.1.4 | Bombas | 2w | 2016-07-07 | 2016-07-20 |  |  |  | 572.06d |  |  |  |  |
| 51 | 8.1.5 | Equipos y Agmin | 2w | 2016-07-07 | 2016-07-20 |  |  |  | 572.06d |  |  |  |  |
| 52 | 8.1.6 | Cilindros | 2w | 2016-07-07 | 2016-07-20 |  |  |  | 572.06d |  |  |  |  |
| 53 | 8.1.7 | Fabricacion y Recuperacion | 2w | 2016-07-07 | 2016-07-20 |  |  |  | 572.06d |  |  |  |  |
| 54 | 8.1.8 | motores | 2w | 2016-07-07 | 2016-07-20 |  |  |  | 572.06d |  |  |  |  |

| ID | WBS | Task | Duration | Start | Finish | Predecessors | Complete | Remaining | Total slack | Free slack | Constraint |
| --- | --- | --- | --- | --- | --- | --- | --- | --- | --- | --- | --- |
| 55 | 9 | **requerimiento de especificaciones Tecnicas** | 42.25d | 2016-08-04 A | 2016-09-30 |  | 2% | 41.48d | 518.56d |  |  |
| 56 | 9.1 | Catastro funcional SISCOM según etapas | 2w | 2016-08-04 | 2016-08-18 |  |  |  | 547.69d | 29.12d | start no earlier than 2016-08-04 |
| 57 | 9.2 | Análisis e Informe del catastro | 2w | 2016-08-04 A | 2016-08-18 |  | 10% | 1.8w | 547.69d | 29.12d | start no earlier than 2016-08-04 |
| 58 | 9.3 | **Analisis software externos** | 31.69d | 2016-08-16 | 2016-09-27 |  |  |  | 521.69d |  |  |
| 59 | 9.3.1 | Revision proveedores | 4d | 2016-08-16 | 2016-08-19 |  |  |  | 529.38d | 0d | start no earlier than 2016-08-16 |
| 60 | 9.3.2 | **Envío de alcances** | 27.69d | 2016-08-19 | 2016-09-27 | 59 |  |  | 521.69d |  |  |
| 61 | 9.3.2.1 | Levantamiento externo | 1mo | 2016-08-19 | 2016-09-15 |  |  |  | 529.38d |  |  |
| 62 | 9.3.2.2 | Recepcion de propuestas | 5d | 2016-09-15 | 2016-09-22 |  |  |  | 518.56d | 0d | finish no earlier than 2016-09-22 |
| 63 | 9.3.2.3 | Análisis de propuestas | 3d | 2016-09-23 | 2016-09-27 | 62 |  |  | 518.56d | 0d |  |
| 64 | 9.4 | Análisis de alternativas | 3d | 2016-09-27 | 2016-09-30 | 56, 57, 63 |  |  | 518.56d | 0d |  |
| 65 | 9.5 | Presentación de alternativas | 1h | 2016-09-30 | 2016-09-30 | 64 |  |  | 518.56d |  |  |
| 66 | 10 | **Informe de Requerimiento y Propuesta de Solucion** | 555.5d | 2016-08-11 | 2018-09-12 |  |  |  | 0d |  |  |
| 67 | 10.1 | **Recepcion de componentes** | 19.5d | 2016-08-11 | 2016-09-07 |  |  |  | 0d |  |  |
| 68 | 10.1.1 | Toma de requerimientos | 4h | 2016-08-11 | 2016-08-11 |  |  |  | 0d |  | start no earlier than 2016-08-11 |
| 69 | 10.1.2 | Informe del requerimiento | 3d | 2016-08-11 | 2016-08-17 | 68 |  |  | 0d |  |  |
| 70 | 10.1.3 | Desarrollo del modulo | 1w | 2016-08-17 | 2016-08-23 | 69 |  |  | 0d |  |  |
| 71 | 10.1.4 | **Testing (Certificación)** | 5d | 2016-08-24 | 2016-08-30 |  |  |  | 536d |  |  |
| 72 | 10.1.4.1 | revision interna | 1d | 2016-08-24 | 2016-08-24 | 70 |  |  | 536d | 0d |  |
| 73 | 10.1.4.2 | revision usuario | 1d | 2016-08-24 | 2016-08-25 | 72 |  |  | 536d | 0d |  |
| 74 | 10.1.4.3 | pruebas abiertas | 3d | 2016-08-25 | 2016-08-30 | 73 |  |  | 536d | 0d |  |
| 75 | 10.1.5 | Capacitaciones | 1d | 2016-08-30 | 2016-08-31 | 74 |  |  | 536d | 0d |  |
| 76 | 10.1.6 | Paso a producción y Puesta en marcha | 1w | 2016-08-31 | 2016-09-07 | 75 |  |  | 536d |  |  |
| 77 | 10.2 | **Evaluar trabajo** | 205d | 2016-08-24 | 2017-05-29 |  |  |  | 0d |  |  |
| 78 | 10.2.1 | Toma de requerimientos | 1mo | 2016-08-24 | 2016-09-20 | 70 |  |  | 0d |  |  |
| 79 | 10.2.2 | Informe del requerimiento | 2w | 2016-09-20 | 2016-10-04 | 78 |  |  | 0d |  |  |
| 80 | 10.2.3 | Modelamiento de Datos | 1w | 2016-10-04 | 2016-10-10 | 79 |  |  | 0d |  |  |
| 81 | 10.2.4 | Ordenamiento de datos | 2w | 2016-10-10 | 2016-10-25 | 80 |  |  | 502d |  |  |
| 82 | 10.2.5 | Desarrollo del modulo | 6mo | 2016-10-10 | 2017-03-22 | 80 |  |  | 0d |  |  |

| ID | WBS | Task | Duration | Start | Finish | Predecessors | Total slack | Free slack |
| --- | --- | --- | --- | --- | --- | --- | --- | --- |
| 83 | 10.2.6 | **Testing (Certificación)** | 25d | 2017-03-22 | 2017-04-25 |  | 342d |  |
| 84 | 10.2.6.1 | revision interna | 2w | 2017-03-22 | 2017-04-05 | 82 | 342d | 0d |
| 85 | 10.2.6.2 | revision usuario | 1w | 2017-04-05 | 2017-04-11 | 84 | 342d | 0d |
| 86 | 10.2.6.3 | pruebas abiertas | 2w | 2017-04-12 | 2017-04-25 | 85 | 342d | 0d |
| 87 | 10.2.7 | Capacitaciones | 2w | 2017-04-25 | 2017-05-09 | 86 | 342d | 0d |
| 88 | 10.2.8 | Paso a producción y Puesta en marcha | 3w | 2017-05-09 | 2017-05-29 | 87 | 342d |  |
| 89 | 10.3 | **Reparacion** | 155d | 2017-03-22 | 2017-10-20 |  | 0d |  |
| 90 | 10.3.1 | Toma de requerimientos | 2w | 2017-03-22 | 2017-04-05 | 82 | 0d |  |
| 91 | 10.3.2 | Informe del requerimiento | 1w | 2017-04-05 | 2017-04-11 | 90 | 0d |  |
| 92 | 10.3.3 | Desarrollo del modulo | 4mo | 2017-04-12 | 2017-07-28 | 91 | 0d |  |
| 93 | 10.3.4 | **Testing (Certificación)** | 35d | 2017-07-28 | 2017-09-14 |  | 237d |  |
| 94 | 10.3.4.1 | revision interna | 2w | 2017-07-28 | 2017-08-10 | 92 | 237d | 0d |
| 95 | 10.3.4.2 | revision usuario | 2w | 2017-08-10 | 2017-08-25 | 94 | 237d | 0d |
| 96 | 10.3.4.3 | pruebas abiertas | 3w | 2017-08-25 | 2017-09-14 | 95 | 237d | 0d |
| 97 | 10.3.5 | Capacitaciones | 2w | 2017-09-14 | 2017-09-29 | 96 | 237d | 0d |
| 98 | 10.3.6 | Paso a producción y Puesta en marcha | 3w | 2017-09-29 | 2017-10-20 | 97 | 237d |  |
| 99 | 10.4 | **Proceso Compras** | 41d | 2017-07-28 | 2017-09-25 |  | 0d |  |
| 100 | 10.4.1 | Toma de requerimientos | 1w | 2017-07-28 | 2017-08-03 | 92 | 0d |  |
| 101 | 10.4.2 | Informe del requerimiento | 1w | 2017-08-04 | 2017-08-10 | 100 | 0d |  |
| 102 | 10.4.3 | Desarrollo del modulo | 2w | 2017-08-10 | 2017-08-25 | 101 | 0d |  |
| 103 | 10.4.4 | **Testing (Certificación)** | 11d | 2017-08-25 | 2017-09-08 | 102 | 256d | 0d |
| 104 | 10.4.4.1 | revision interna | 3d | 2017-08-25 | 2017-08-29 |  | 256d | 0d |
| 105 | 10.4.4.2 | revision usuario | 3d | 2017-08-29 | 2017-09-01 | 104 | 256d | 0d |
| 106 | 10.4.4.3 | pruebas abiertas | 1w | 2017-09-01 | 2017-09-08 | 105 | 256d |  |
| 107 | 10.4.5 | Capacitaciones | 1w | 2017-09-08 | 2017-09-15 | 103 | 256d | 0d |
| 108 | 10.4.6 | Paso a producción y Puesta en Marcha | 1w | 2017-09-15 | 2017-09-25 | 107 | 256d |  |

| ID | WBS | Task | Duration | Start | Finish | Predecessors | Total slack | Free slack |
| --- | --- | --- | --- | --- | --- | --- | --- | --- |
| 109 | 10.5 | **Simulaciones** | 225d | 2017-08-25 | 2018-07-03 |  | 0d |  |
| 110 | 10.5.1 | Toma de requerimientos | 3w | 2017-08-25 | 2017-09-14 | 102 | 0d |  |
| 111 | 10.5.2 | Informe del requerimiento | 2w | 2017-09-14 | 2017-09-29 | 110 | 0d |  |
| 112 | 10.5.3 | Modelamiento de Datos | 1mo | 2017-09-29 | 2017-10-27 | 111 | 0d |  |
| 113 | 10.5.4 | Ordenamiento de datos | 2w | 2017-10-27 | 2017-11-13 | 112 | 222d |  |
| 114 | 10.5.5 | Desarrollo del modulo | 6mo | 2017-10-27 | 2018-04-11 | 112 | 0d |  |
| 115 | 10.5.6 | **Testing (Certificación)** | 30d | 2018-04-11 | 2018-05-23 |  | 52d |  |
| 116 | 10.5.6.1 | revision interna | 1mo | 2018-04-11 | 2018-05-09 | 114 | 52d | 0d |
| 117 | 10.5.6.2 | revision usuario | 1w | 2018-05-09 | 2018-05-15 | 116 | 52d | 0d |
| 118 | 10.5.6.3 | pruebas abiertas | 1w | 2018-05-15 | 2018-05-23 | 117 | 52d | 0d |
| 119 | 10.5.7 | Capacitaciones | 2w | 2018-05-23 | 2018-06-06 | 118 | 52d | 0d |
| 120 | 10.5.8 | Paso a producción y Puesta en marcha | 1mo | 2018-06-06 | 2018-07-03 | 119 | 52d |  |
| 121 | 10.6 | **Despacho** | 43d | 2018-04-11 | 2018-06-08 |  | 0d |  |
| 122 | 10.6.1 | Toma de requerimientos | 1w | 2018-04-11 | 2018-04-18 | 114 | 0d |  |
| 123 | 10.6.2 | Informe del requerimiento | 3d | 2018-04-18 | 2018-04-20 | 122 | 0d |  |
| 124 | 10.6.3 | Desarrollo del modulo | 1mo | 2018-04-20 | 2018-05-18 | 123 | 0d |  |
| 125 | 10.6.4 | Testing (Certificación) | 1w | 2018-05-18 | 2018-05-28 | 124 | 69d | 0d |
| 126 | 10.6.5 | Capacitaciones | 1w | 2018-05-28 | 2018-06-04 | 125 | 69d | 0d |
| 127 | 10.6.6 | Paso a producción y Puesta en Marcha | 1w | 2018-06-04 | 2018-06-08 | 126 | 69d |  |
| 128 | 10.7 | **Liberación de componente** | 33d | 2018-05-18 | 2018-07-04 |  | 0d |  |
| 129 | 10.7.1 | Toma de requerimientos | 1w | 2018-05-18 | 2018-05-28 | 124, 127 | 0d |  |
| 130 | 10.7.2 | Informe del requerimiento | 3d | 2018-05-28 | 2018-05-31 | 129 | 0d |  |
| 131 | 10.7.3 | Desarrollo del modulo | 2w | 2018-05-31 | 2018-06-13 | 130 | 0d |  |
| 132 | 10.7.4 | Testing (Certificación) | 1w | 2018-06-13 | 2018-06-20 | 131 | 51d | 0d |
| 133 | 10.7.5 | Capacitaciones | 1w | 2018-06-20 | 2018-06-28 | 132 | 51d | 0d |
| 134 | 10.7.6 | Paso a producción | 1w | 2018-06-28 | 2018-07-04 | 133 | 51d |  |

| ID | WBS | Task | Duration | Start | Finish | Predecessors | Total slack | Free slack |
| --- | --- | --- | --- | --- | --- | --- | --- | --- |
| 135 | 10.8 | **Cotizar trabajo** | 53d | 2018-06-13 | 2018-08-27 |  | 0d |  |
| 136 | 10.8.1 | Toma de requerimientos | 2w | 2018-06-13 | 2018-06-28 | 131, 134 | 0d |  |
| 137 | 10.8.2 | Informe del requerimiento | 3d | 2018-06-28 | 2018-07-02 | 136 | 0d |  |
| 138 | 10.8.3 | Desarrollo del modulo | 1mo | 2018-07-02 | 2018-07-30 | 137 | 0d |  |
| 139 | 10.8.4 | Testing (Certificación) | 2w | 2018-07-30 | 2018-08-13 | 138 | 13d | 0d |
| 140 | 10.8.5 | Capacitaciones | 1w | 2018-08-13 | 2018-08-20 | 139 | 13d | 0d |
| 141 | 10.8.6 | Paso a producción | 1w | 2018-08-20 | 2018-08-27 | 140 | 13d |  |
| 142 | 10.9 | **Aprobar cotización** | 33d | 2018-07-30 | 2018-09-12 |  | 0d |  |
| 143 | 10.9.1 | Toma de requerimientos | 1w | 2018-07-30 | 2018-08-06 | 138, 141 | 0d |  |
| 144 | 10.9.2 | Informe del requerimiento | 3d | 2018-08-06 | 2018-08-09 | 143 | 0d |  |
| 145 | 10.9.3 | Desarrollo del modulo | 2w | 2018-08-09 | 2018-08-23 | 144 | 0d |  |
| 146 | 10.9.4 | Testing (Certificación) | 1w | 2018-08-23 | 2018-08-30 | 145 | 0d |  |
| 147 | 10.9.5 | Capacitaciones | 1w | 2018-08-30 | 2018-09-06 | 146 | 0d |  |
| 148 | 10.9.6 | Paso a producción | 1w | 2018-09-06 | 2018-09-12 | 147 | 0d |  |
